# 会员刷卡积分管理系统_项目进度计划

Schedule from MS Project, 2018-07-19 to 2018-08-21, status date 2018-08-22, 6 hours a day, costs in ¥, A marks actual dates.
Hewlett-Packard Company

## Calendars

- 标准: Mon-Fri 09:00-12:00, 14:00-17:00; Sat-Sun off.

## Resources

| Resource | Rate |
| --- | --- |
| 伍锦彬 | 60 |
| 徐兆科 | 50 |
| 黄鑫辉 | 50 |
| 马晓鹏 | 50 |
| 陈展望 |  |
| 方兆彬 |  |
| 陈嘉康 |  |
| 黄一桂 |  |
| 吴东升 |  |
| 袁罗秀 |  |
| 许晓佳 |  |
| 吴杰威 |  |
| 赖海威 |  |

## Schedule

| ID | WBS | Task | Type | Duration | Start | Finish | Predecessors | Complete | Remaining | Baseline start | Baseline finish | Baseline duration | Total slack | Resources | Work | Actual work | Cost | Baseline cost | Actual cost |
| --- | --- | --- | --- | --- | --- | --- | --- | --- | --- | --- | --- | --- | --- | --- | --- | --- | --- | --- | --- |
| 1 | 1 | **会员刷卡积分管理系统** |  | 24d | 2018-07-19 A | 2018-08-21 |  | 33% | 16.14d | 2018-07-19 | 2018-08-21 | 24d | 0d |  | 433h | 112h | 22,010 | 20,490 | 5,960 |
| 2 | 1.1 | **1 先启阶段** |  | 7d | 2018-07-19 A | 2018-07-27 A |  | 100% |  | 2018-07-19 | 2018-07-27 | 7d |  |  | 112h | 112h | 5,960 | 5,910 | 5,960 |
| 3 | 1.1.1 | **1.1 项目管理** |  | 2d | 2018-07-19 A | 2018-07-20 A |  | 100% |  | 2018-07-19 | 2018-07-20 | 2d |  |  | 18h | 18h | 1,020 | 1,020 | 1,020 |
| 4 | 1.1.1.1 | 1.1.1 立项 | manual | 1d | 2018-07-19 A | 2018-07-19 A |  | 100% |  | 2018-07-19 | 2018-07-19 | 1d |  | 伍锦彬 | 6h | 6h | 360 | 360 | 360 |
| 5 | 1.1.1.2 | 1.1.2 制定项目计划 | manual | 1d | 2018-07-20 A | 2018-07-20 A | 4 | 100% |  | 2018-07-20 | 2018-07-20 | 1d |  | 伍锦彬 | 6h | 6h | 360 | 360 | 360 |
| 6 | 1.1.1.3 | 1.1.3 同行评审 | manual | 1d | 2018-07-20 A | 2018-07-20 A | 4, 5 | 100% |  | 2018-07-20 | 2018-07-20 | 1d |  | 马晓鹏 | 6h | 6h | 300 | 300 | 300 |
| 7 | 1.1.2 | **1.2 配置管理** |  | 2d | 2018-07-19 A | 2018-07-20 A |  | 100% |  | 2018-07-19 | 2018-07-20 | 2d |  |  | 7h | 7h | 350 | 300 | 350 |
| 8 | 1.1.2.1 | 1.2.1 制定配置计划 | manual | 0.17d | 2018-07-19 A | 2018-07-19 A |  | 100% |  | 2018-07-19 | 2018-07-19 | 0d |  | 徐兆科 | 1h | 1h | 50 |  | 50 |
| 9 | 1.1.2.2 | 1.2.2 搭建配置环境 | manual | 1d | 2018-07-20 A | 2018-07-20 A |  | 100% |  | 2018-07-20 | 2018-07-20 | 1d |  | 徐兆科 | 6h | 6h | 300 | 300 | 300 |
| 10 | 1.1.3 | **1.3 需求开发** |  | 3d | 2018-07-23 A | 2018-07-25 A |  | 100% |  | 2018-07-23 | 2018-07-25 | 3d |  |  | 54h | 54h | 2,880 | 2,880 | 2,880 |
| 11 | 1.1.3.1 | 1.3.1 用例建模 | manual | 1d | 2018-07-23 A | 2018-07-23 A | 5 | 100% |  | 2018-07-23 | 2018-07-23 | 1d |  | 马晓鹏; 黄鑫辉; 伍锦彬 | 18h | 18h | 960 | 960 | 960 |
| 12 | 1.1.3.2 | 1.3.2 用例阐述 | manual | 2d | 2018-07-24 A | 2018-07-25 A | 11 | 100% |  | 2018-07-24 | 2018-07-25 | 2d |  | 马晓鹏; 黄鑫辉; 伍锦彬 | 36h | 36h | 1,920 | 1,920 | 1,920 |
| 13 | 1.1.4 | **1.4 测试计划** |  | 2d | 2018-07-24 A | 2018-07-25 A |  | 100% |  | 2018-07-24 | 2018-07-25 | 2d |  |  | 12h | 12h | 600 | 600 | 600 |
| 14 | 1.1.4.1 | 1.4.1 制定测试计划 | manual | 1d | 2018-07-24 A | 2018-07-24 A | 11 | 100% |  | 2018-07-24 | 2018-07-24 | 1d |  | 徐兆科 | 6h | 6h | 300 | 300 | 300 |
| 15 | 1.1.4.2 | 1.4.2 系统测试用例设计 | manual | 1d | 2018-07-25 A | 2018-07-25 A | 14 | 100% |  | 2018-07-25 | 2018-07-25 | 1d |  | 徐兆科 | 6h | 6h | 300 | 300 | 300 |
| 16 | 1.1.5 | **1.5 阶段评审** |  | 2d | 2018-07-26 A | 2018-07-27 A |  | 100% |  | 2018-07-26 | 2018-07-27 | 2d |  |  | 21h | 21h | 1,110 | 1,110 | 1,110 |
| 17 | 1.1.5.1 | 1.5.1 先启配置状态审计 | manual | 1d | 2018-07-26 A | 2018-07-26 A | 15 | 100% |  | 2018-07-26 | 2018-07-26 | 1d |  | 伍锦彬 | 6h | 6h | 360 | 360 | 360 |
| 18 | 1.1.5.2 | 1.5.2 评审需求工件 | manual | 1d | 2018-07-26 A | 2018-07-26 A | 15 | 100% |  | 2018-07-26 | 2018-07-26 | 1d |  | 黄鑫辉; 马晓鹏 | 12h | 12h | 600 | 600 | 600 |
| 19 | 1.1.5.3 | 1.5.3 发布需求基线 | manual | 1d | 2018-07-27 A | 2018-07-27 A | 17, 18 | 100% |  | 2018-07-27 | 2018-07-27 | 1d |  | 徐兆科 | 3h | 3h | 150 | 150 | 150 |
| 20 | 1.2 | **2 精化阶段** |  | 5d | 2018-07-30 | 2018-08-03 |  |  |  | 2018-07-30 | 2018-08-03 | 5d | 0d |  | 39h |  | 1,950 | 2,070 |  |
| 21 | 1.2.1 | 2.1 设计界面原型 | manual | 1d | 2018-07-30 | 2018-07-30 | 19 |  |  | 2018-07-30 | 2018-07-30 | 1d |  | 方兆彬 | 6h |  | 300 | 300 |  |
| 22 | 1.2.2 | **2.2 OOAD** |  | 1d | 2018-08-01 | 2018-08-01 |  |  |  | 2018-08-01 | 2018-08-01 | 1d | 0d |  | 6h |  | 300 | 660 |  |
| 23 | 1.2.2.1 | 2.2.1 分析模型 | manual | 0.5d | 2018-08-01 | 2018-08-01 | 11 |  |  | 2018-08-01 | 2018-08-01 | 0.5d |  | 陈嘉康 | 3h |  | 150 | 330 |  |
| 24 | 1.2.2.2 | 2.2.2 设计模型 | manual | 0.5d | 2018-08-01 | 2018-08-01 | 23 |  |  | 2018-08-01 | 2018-08-01 | 0.5d |  | 黄一桂 | 3h |  | 150 | 330 |  |
| 25 | 1.2.3 | 2.3 数据建模与数据库设计 | manual | 1d | 2018-08-02 | 2018-08-02 | 24 |  |  | 2018-08-02 | 2018-08-02 | 1d |  | 陈展望 | 6h |  | 300 | 600 |  |
| 26 | 1.2.4 | 2.4 集成测试用例设计 | manual | 0.5d | 2018-08-03 | 2018-08-03 | 25 |  |  | 2018-08-03 | 2018-08-03 | 0.5d |  | 方兆彬 | 3h |  | 150 | 150 |  |

| ID | WBS | Task | Type | Duration | Start | Finish | Predecessors | Baseline start | Baseline finish | Baseline duration | Total slack | Resources | Work | Cost | Baseline cost |
| --- | --- | --- | --- | --- | --- | --- | --- | --- | --- | --- | --- | --- | --- | --- | --- |
| 27 | 1.2.5 | **2.5 阶段评审** |  | 1d | 2018-08-03 | 2018-08-03 | 26 | 2018-08-03 | 2018-08-03 | 1d |  |  | 18h | 900 | 360 |
| 28 | 1.2.5.1 | 2.5.1 精化配置状态审计 | manual | 1d | 2018-08-03 | 2018-08-03 |  | 2018-08-03 | 2018-08-03 | 1d? |  | 陈嘉康 | 6h | 300 |  |
| 29 | 1.2.5.2 | 2.5.2 评审设计工件 | manual | 1d | 2018-08-03 | 2018-08-03 |  | 2018-08-03 | 2018-08-03 | 1d? |  | 黄一桂 | 6h | 300 |  |
| 30 | 1.2.5.3 | 2.5.3 发布设计基线 | manual | 1d | 2018-08-03 | 2018-08-03 |  | 2018-08-03 | 2018-08-03 | 1d? |  | 陈展望 | 6h | 300 |  |
| 31 | 1.3 | **3 构建阶段** |  | 10d | 2018-08-06 | 2018-08-17 |  | 2018-08-06 | 2018-08-17 | 10d | 0d |  | 240h | 12,000 | 10,890 |
| 32 | 1.3.1 | 3.1 单元编码 | manual | 7d | 2018-08-06 | 2018-08-14 | 27 | 2018-08-06 | 2018-08-14 | 7d |  | 吴东升; 袁罗秀; 许晓佳; 吴杰威; 赖海威 | 210h | 10,500 | 8,820 |
| 33 | 1.3.2 | 3.2 集成测试 | manual | 1d | 2018-08-15 | 2018-08-15 | 32 | 2018-08-15 | 2018-08-15 | 1d |  | 吴东升 | 6h | 300 | 1,260 |
| 34 | 1.3.3 | 3.3 系统测试 | manual | 0.5d | 2018-08-16 | 2018-08-16 | 33 | 2018-08-16 | 2018-08-16 | 0.5d |  | 许晓佳; 吴杰威 | 6h | 300 | 450 |
| 35 | 1.3.4 | **3.4 阶段评审** |  | 1d | 2018-08-17 | 2018-08-17 | 34 | 2018-08-17 | 2018-08-17 | 1d |  |  | 18h | 900 | 360 |
| 36 | 1.3.4.1 | 3.4.1 构建配置状态审计 | manual | 1d | 2018-08-17 | 2018-08-17 |  | 2018-08-17 | 2018-08-17 | 1d |  | 袁罗秀 | 6h | 300 |  |
| 37 | 1.3.4.2 | 3.4.2 评审构建工件 | manual | 1d | 2018-08-17 | 2018-08-17 |  | 2018-08-17 | 2018-08-17 | 1d? |  | 吴东升 | 6h | 300 |  |
| 38 | 1.3.4.3 | 3.4.3 发布构建基线 | manual | 1d | 2018-08-17 | 2018-08-17 |  | 2018-08-17 | 2018-08-17 | 1d? |  | 赖海威 | 6h | 300 |  |
| 39 | 1.4 | **4 产品化阶段** |  | 2d | 2018-08-20 | 2018-08-21 |  | 2018-08-20 | 2018-08-21 | 2d |  |  | 42h | 2,100 | 1,620 |
| 40 | 1.4.1 | **4.1 产品发布** |  | 1d | 2018-08-20 | 2018-08-20 | 35 | 2018-08-20 | 2018-08-20 | 1d |  |  | 6h | 300 | 360 |
| 41 | 1.4.1.1 | 4.1.1 编写产品说明书 | manual | 1d | 2018-08-20 | 2018-08-20 |  | 2018-08-20 | 2018-08-20 | 1d |  | 吴东升 | 6h | 300 |  |
| 42 | 1.4.2 | **4.2产品部署** |  | 1d | 2018-08-20 | 2018-08-20 | 41 | 2018-08-20 | 2018-08-20 | 1d |  |  | 12h | 600 | 600 |
| 43 | 1.4.2.1 | 4.2.1 搭建环境 | manual | 1d | 2018-08-20 | 2018-08-20 |  | 2018-08-20 | 2018-08-20 | 1d |  | 吴杰威 | 6h | 300 |  |
| 44 | 1.4.2.2 | 4.2.2 运行产品 | manual | 1d | 2018-08-20 | 2018-08-20 |  | 2018-08-20 | 2018-08-20 | 1d |  | 袁罗秀 | 6h | 300 |  |
| 45 | 1.4.3 | 4.3 产品测试 | manual | 1d | 2018-08-21 | 2018-08-21 | 44 | 2018-08-21 | 2018-08-21 | 1d |  | 许晓佳 | 6h | 300 | 300 |
| 46 | 1.4.4 | **4.4 阶段评审暨结项** |  | 1d | 2018-08-21 | 2018-08-21 | 45 | 2018-08-21 | 2018-08-21 | 1d |  |  | 18h | 900 | 360 |
| 47 | 1.4.4.1 | 4.4.1 配置状态审计 | manual | 1d | 2018-08-21 | 2018-08-21 |  | 2018-08-21 | 2018-08-21 | 1d |  | 赖海威 | 6h | 300 |  |
| 48 | 1.4.4.2 | 4.4.2 评审产品 | manual | 1d | 2018-08-21 | 2018-08-21 |  | 2018-08-21 | 2018-08-21 | 1d |  | 吴东升 | 6h | 300 |  |
| 49 | 1.4.4.3 | 4.4.3 结项 | manual | 1d | 2018-08-21 | 2018-08-21 |  | 2018-08-21 | 2018-08-21 | 1d |  | 吴东升 | 6h | 300 |  |
